# camod_2.1_schedule

Schedule from MS Project, 2005-12-29 to 2006-07-11, A marks actual dates.
nci

## Calendars

- Standard: Mon-Fri 08:00-12:00, 13:00-17:00; Sat-Sun off.

## Resources

| Resource |
| --- |
| CCMG |
| NCICB |
| Srini |
| CCMG Members |
| QA |
| Ulli |
| Nick |
| Team |
| David |
| Marc P. |
| Sima |
| Jill |
| Ajay |
| Derek |
| Davidi |

## Schedule

| ID | WBS | Task | Type | Duration | Start | Finish | Predecessors | Complete | Remaining | Total slack | Free slack | Constraint | Resources | Work | Actual work |
| --- | --- | --- | --- | --- | --- | --- | --- | --- | --- | --- | --- | --- | --- | --- | --- |
| 1 | 1 | **caMOD Version 2.X** |  | 138.25d | 2005-12-29 A | 2006-07-11 |  | 1% | 137.47d | 0d |  |  |  | 4248.63h | 36h |
| 2 | 1.1 | **Inception** |  | 2.4d | 2005-12-29 | 2006-01-02 |  |  |  | 0d |  |  |  | 48h |  |
| 3 | 1.1.1 | Identify caMOD 2.x requirements |  | 2.4d | 2005-12-29 | 2006-01-02 |  |  |  | 0d |  | start no earlier than 2005-12-29 | Srini [50%]; Ulli [50%]; David [50%] | 24h |  |
| 4 | 1.1.2 | Identify usability enhancement requirements |  | 2.4d | 2005-12-29 | 2006-01-02 |  |  |  | 0d |  |  | Srini [50%]; Ulli [50%]; David [50%] | 24h |  |
| 5 | 1.2 | **Elaboration** |  | 123.2d | 2006-01-02 A | 2006-06-22 | 2 | 2% | 120.58d | 12.65d |  |  |  | 1316h | 20h |
| 6 | 1.2.1 | Draft caMOD 2.x Test Cases |  | 1w | 2006-01-02 | 2006-01-09 |  |  |  | 130.85d |  |  | Ulli [50%]; David [50%]; Ajay [50%] | 60h |  |
| 7 | 1.2.2 | Draft caMOD 2.x Usability Enhancement Use Cases |  | 4w | 2006-01-02 | 2006-01-30 |  |  |  | 0d |  |  | David [50%]; Ajay [50%]; Ulli [50%] | 240h |  |
| 8 | 1.2.3 | Draft caMOD 2.x Use Cases |  | 12w | 2006-01-02 | 2006-03-27 | 2 |  |  | 12.65d | 0d |  | David [50%]; Ajay [50%]; Ulli [50%] | 720h |  |
| 9 | 1.2.4 | Review Use Cases, including CCMG members |  | 1d | 2006-03-27 | 2006-06-22 | 8 |  |  | 12.65d |  |  | CCMG Members | 8h |  |
| 10 | 1.2.5 | **caMOD database enhancements** |  | 10.5d | 2006-01-02 A | 2006-01-16 |  | 36% | 6.75d | 100.85d | 0d |  |  | 48h | 20h |
| 11 | 1.2.5.1 | Consolidate all DB changes |  | 1w | 2006-01-02 A | 2006-01-09 |  | 50% | 0.5w | 57.85d | 0d | start no earlier than 2005-06-06 | Ulli [75%]; Derek [25%] | 40h | 20h |
| 12 | 1.2.5.2 | Updated Object Model |  | 1d | 2006-01-09 | 2006-01-13 | 11 |  |  | 57.85d | 0d |  | David [50%] | 4h |  |
| 13 | 1.2.5.3 | Updated Data Model |  | 1d | 2006-01-13 | 2006-01-16 | 12 |  |  | 57.85d | 0d |  | David [50%] | 4h |  |
| 14 | 1.2.5.4 | Milestone: Completed ER document | milestone | 0d | 2006-01-16 | 2006-01-16 | 13 |  |  | 57.85d |  |  |  |  |  |
| 15 | 1.2.6 | **Interface with caDSR** |  | 24.5d | 2006-01-16 | 2006-02-20 | 10 |  |  | 100.85d |  |  |  | 240h |  |
| 16 | 1.2.6.1 | Annotate UML model with well formed names and definitions |  | 3d | 2006-01-16 | 2006-01-19 | 10 |  |  | 57.85d | 0d |  | Ulli | 24h |  |
| 17 | 1.2.6.2 | Review semantic connector output |  | 0.5d | 2006-01-19 | 2006-01-20 | 16 |  |  | 57.85d | 0d |  | Srini; Ulli | 8h |  |
| 18 | 1.2.6.3 | Perform semantic annotation of UML models |  | 2d | 2006-01-20 | 2006-01-24 | 17 |  |  | 57.85d | 0d |  | Ulli | 16h |  |
| 19 | 1.2.6.4 | Run UML loader |  | 2w | 2006-01-24 | 2006-02-07 | 18 |  |  | 57.85d | 0d |  | NCICB | 80h |  |
| 20 | 1.2.6.5 | Review CDEs in staging |  | 2d | 2006-02-07 | 2006-02-09 | 19 |  |  | 57.85d | 0d |  | Ulli | 16h |  |
| 21 | 1.2.6.6 | Curate additional metadata |  | 2d | 2006-02-09 | 2006-02-13 | 20 |  |  | 57.85d | 0d |  | Ulli | 16h |  |
| 22 | 1.2.6.7 | Establish baseline documentation and prepare submission package |  | 1w | 2006-02-13 | 2006-02-20 | 21 |  |  | 57.85d |  |  | Srini; Ulli | 80h |  |
| 23 | 1.3 | **Construction** |  | 119.35d | 2006-01-16 | 2006-07-03 |  |  |  | 6d |  |  |  | 2749.03h | 16h |
| 24 | 1.3.1 | **Iteration 1** |  | 59.35d | 2006-01-16 | 2006-04-10 |  |  |  | 9.5d |  |  |  | 580h |  |
| 25 | 1.3.1.1 | Requirements Analysis |  | 3d | 2006-01-30 | 2006-02-02 | 7 |  |  | 0d |  |  | David [75%]; Sima [50%] | 30h |  |
| 26 | 1.3.1.2 | Design |  | 0.5w | 2006-02-02 | 2006-02-06 | 25 |  |  | 0d |  |  | David [50%]; Sima [50%] | 20h |  |
| 27 | 1.3.1.3 | Data cleanup |  | 2d | 2006-01-16 | 2006-01-18 | 10 |  |  | 80.35d |  |  | Ulli [75%]; Derek [25%] | 16h |  |
| 28 | 1.3.1.4 | Create schema migration scripts |  | 5d | 2006-02-06 | 2006-02-13 | 26 |  |  | 0d |  |  | Derek [75%]; Ulli [25%] | 40h |  |
| 29 | 1.3.1.5 | Hibernate Mapping changes |  | 2.25d | 2006-02-13 | 2006-02-16 | 28 |  |  | 0d |  |  | Sima [50%]; David [50%] | 18h |  |

| ID | WBS | Task | Duration | Start | Finish | Predecessors | Total slack | Free slack | Constraint | Resources | Work |
| --- | --- | --- | --- | --- | --- | --- | --- | --- | --- | --- | --- |
| 30 | 1.3.1.6 | **Code** | 33.1d | 2006-02-16 | 2006-04-04 | 29 | 0d |  |  |  | 408h |
| 31 | 1.3.1.6.1 | **EVS Tree modification** | 10d | 2006-02-16 | 2006-03-02 |  | 23.1d |  |  |  |  |
| 32 | 1.3.1.6.1.1 | #37 - EVS Tree - Why does a search for synonyms in anatomy tree return disease and drugs? | 2w | 2006-02-16 | 2006-03-02 |  | 23.1d |  |  |  |  |
| 33 | 1.3.1.6.1.2 | #274 - EVS Tree - restore the association between organ and diagnosis | 6d | 2006-02-16 | 2006-02-24 |  | 27.1d |  |  |  |  |
| 34 | 1.3.1.6.1.3 | #276 - EVS Tree - use display name instead of concept name | 1d | 2006-02-16 | 2006-02-17 |  | 32.1d |  |  |  |  |
| 35 | 1.3.1.6.1.4 | #277 - EVS Tree - develop procedure to inform EVS team about newly entered diagnostic terms | 2d | 2006-02-16 | 2006-02-20 |  | 31.1d |  |  |  |  |
| 36 | 1.3.1.6.1.5 | #278 - EVS Tree - change skin to match caMOD application | 2d | 2006-02-16 | 2006-02-20 |  | 31.1d |  |  |  |  |
| 37 | 1.3.1.6.1.6 | #279 - EVS Tree - remove the word Done from the tree | 1d | 2006-02-16 | 2006-02-17 |  | 32.1d |  |  |  |  |
| 38 | 1.3.1.6.2 | **caMOD usibility enhancements** | 5d | 2006-02-16 | 2006-02-23 | 29 | 28.1d |  |  |  | 16h |
| 39 | 1.3.1.6.2.1 | #273 - Improve the way the drop down lists work | 1w | 2006-02-16 | 2006-02-23 | 26 | 28.1d |  |  |  |  |
| 40 | 1.3.1.6.2.2 | #304 - Provide link to MTB record at Jax on the Search General Info page | 1d | 2006-02-22 | 2006-02-23 | 51 | 28.1d |  |  |  |  |
| 41 | 1.3.1.6.2.3 | #345 - Viewing/submitting images while in https mode has nag message in IE | 2d | 2006-02-16 | 2006-02-20 | 26 | 31.1d |  |  | David | 16h |
| 42 | 1.3.1.6.3 | **caMOD enhancements** | 25d | 2006-02-16 | 2006-03-23 | 3 | 8.1d |  |  |  | 208h |
| 43 | 1.3.1.6.3.1 | #359 - Make caMod available in the grid | 5w | 2006-02-16 | 2006-03-23 |  | 8.1d |  | start no earlier than 2006-01-09 | Marc P. | 200h |
| 44 | 1.3.1.6.3.2 | #291 - Genetic Des - Induced Mutation search inconsistency | 1d | 2006-02-16 | 2006-02-17 |  | 32.1d |  |  |  |  |
| 45 | 1.3.1.6.3.3 | #171 - Gene Delivery can be a way other than virus | 1d | 2006-02-16 | 2006-02-17 |  | 32.1d |  | start no earlier than 2006-01-09 | David | 8h |
| 46 | 1.3.1.6.4 | **caMOD database enhancements** | 33.1d | 2006-02-16 | 2006-04-04 | 29 | 0d |  |  |  | 184h |
| 47 | 1.3.1.6.4.1 | #43 - DB - Gene ID in spon mutation page | 0.5d | 2006-02-16 | 2006-02-16 |  | 0d |  |  | Nick | 4h |
| 48 | 1.3.1.6.4.2 | #243 - DB - No "other" can be choose from Donor Species | 1d | 2006-02-16 | 2006-02-17 | 47 | 0d |  |  |  |  |
| 49 | 1.3.1.6.4.3 | #249 - No "other" can be choose from Donor Species | 0.5d | 2006-02-17 | 2006-02-20 | 48, 47 | 0d |  |  | Sima | 4h |
| 50 | 1.3.1.6.4.4 | #296 - DB - wrong display of targeted vs random integration of transgene and genomic segment | 1d | 2006-02-20 | 2006-02-21 | 49 | 0d |  |  | David | 8h |
| 51 | 1.3.1.6.4.5 | #303 - DB - Add field to publication table to store the J number | 1d | 2006-02-21 | 2006-02-22 | 50 | 0d |  |  |  |  |
| 52 | 1.3.1.6.4.6 | #326 - DB - Remove Duplicates in the taxon table and consider splitting the taxon table in species and strain table (back to what we... | 1w | 2006-02-22 | 2006-03-01 | 51, 50 | 0d |  |  | David | 40h |
| 53 | 1.3.1.6.4.7 | #327 - DB - Investigate enhancing the design for organ/disease table relations | 2d | 2006-03-01 | 2006-03-03 | 52 | 0d |  |  | David | 16h |
| 54 | 1.3.1.6.4.8 | #328 - DB - Remove any unecessary cross-reference tables | 1w | 2006-03-03 | 2006-03-10 | 53 | 0d |  |  | David | 40h |
| 55 | 1.3.1.6.4.9 | #332 - DB - clean up field names | 2d | 2006-03-10 | 2006-03-14 | 54 | 0d |  |  |  |  |
| 56 | 1.3.1.6.4.10 | #333 - DB - Tackle env factor vs agent and therapy vs carcinogenic intervention problems | 1w | 2006-03-14 | 2006-03-21 | 55, 54 | 0d |  |  | David | 40h |
| 57 | 1.3.1.6.4.11 | #334 - DB - Change “tumorProgression” to “tumorResponse” in the therapy object | 0.5d | 2006-03-21 | 2006-03-21 | 56 | 0d |  |  | Sima | 4h |
| 58 | 1.3.1.6.4.12 | #335 - DB - The inhibition rate field in the screening_results table for the yeast data is not used. | 0.1d | 2006-03-21 | 2006-03-21 | 57 | 0d |  |  |  |  |
| 59 | 1.3.1.6.4.13 | #336 - DB - Delete "inherited" attributes isCMAP_agent and source from the agent object | 1d | 2006-03-21 | 2006-03-22 | 58 | 0d |  |  |  |  |
| 60 | 1.3.1.6.4.14 | #338 - DB - Add an other option to the drop-down list of clinical marker | 0.5d | 2006-03-22 | 2006-03-23 | 59, 57 | 0d |  |  | Sima | 4h |
| 61 | 1.3.1.6.4.15 | #340 - DB - Change the relationship between animal_availibility and animal_distributor objects | 1d | 2006-03-23 | 2006-03-24 | 60 | 0d |  |  | Sima | 8h |
| 62 | 1.3.1.6.4.16 | #342 - DB - Modify/Clean up the way we handle units | 1w | 2006-03-24 | 2006-03-31 | 61 | 0d |  |  |  |  |
| 63 | 1.3.1.6.4.17 | #343 - DB - Change Harvest_date from a date field to a varchar | 0.5d | 2006-03-31 | 2006-03-31 | 62, 61 | 0d |  |  | Sima | 4h |
| 64 | 1.3.1.6.4.18 | #346 - DB - Change MGI number to a varchar field | 0.5d | 2006-03-31 | 2006-04-03 | 63 | 0d |  |  | Sima | 4h |
| 65 | 1.3.1.6.4.19 | #348 - DB - Add an uncontrolledVocab for administative route to Ab Cancer Model for Xenograft. | 1d | 2006-04-03 | 2006-04-04 | 64 | 0d |  |  | Sima | 8h |
| 66 | 1.3.1.6.4.20 | #376 - Update caMOD for JDK 1.5 collections and change from List to Set | 1w | 2006-03-10 | 2006-03-17 | 54 | 12.1d |  |  |  |  |
| 67 | 1.3.1.7 | Tag build and deploy to QA server | 1d | 2006-04-04 | 2006-04-05 | 30 | 0d |  |  | QA; David [50%] | 12h |
| 68 | 1.3.1.8 | Test | 3d | 2006-04-05 | 2006-04-10 | 67 | 63d | 0d |  | QA; Ulli [50%] | 36h |
| 69 | 1.3.2 | Milestone: Iteration1 completed | 3d | 2006-04-10 | 2006-04-13 | 68 | 63d |  |  | David [25%] | 6h |

| ID | WBS | Task | Duration | Start | Finish | Predecessors | Total slack | Free slack | Resources | Work | Actual work |
| --- | --- | --- | --- | --- | --- | --- | --- | --- | --- | --- | --- |
| 70 | 1.3.3 | **Iteration 2** | 23.5d | 2006-04-05 | 2006-05-08 | 67 | 0d |  |  | 619.03h | 16h |
| 71 | 1.3.3.1 | Requirements Analysis | 2d | 2006-04-05 | 2006-04-07 |  | 67d |  | Nick [50%]; Sima [50%]; David [50%] | 19.43h |  |
| 72 | 1.3.3.2 | Design | 2d | 2006-04-05 | 2006-04-07 |  | 67d |  | David [50%]; Nick [50%]; Sima [50%]; Ajay [50%] | 32h |  |
| 73 | 1.3.3.3 | **Code** | 17.5d | 2006-04-05 | 2006-04-28 |  | 0d |  | Nick; Sima | 483.6h | 16h |
| 74 | 1.3.3.3.1 | **caMOD usibility enhancements** | 10d | 2006-04-05 | 2006-04-19 |  | 0d |  |  | 154h |  |
| 75 | 1.3.3.3.1.1 | #55 - Feature request - highlight keyword in search result | 3d | 2006-04-05 | 2006-04-10 |  | 14.5d |  | Nick | 24h |  |
| 76 | 1.3.3.3.1.2 | #234 - Allow snapshot of cancer model for reference in publications | 2w | 2006-04-05 | 2006-04-19 |  | 7.5d |  | David | 80h |  |
| 77 | 1.3.3.3.1.3 | #238 - Make search result list configurable | 1w | 2006-04-05 | 2006-04-12 |  | 0d |  | Sima [50%]; David [25%]; Nick [50%] | 50h |  |
| 78 | 1.3.3.3.2 | **caMOD enhancements** | 17.5d | 2006-04-05 | 2006-04-28 |  | 0d |  |  | 64h |  |
| 79 | 1.3.3.3.2.1 | #61 - Sequence Id field on search detail page not populated | 1d | 2006-04-05 | 2006-04-06 |  | 16.5d |  | Sima | 8h |  |
| 80 | 1.3.3.3.2.2 | #225 - Clear Organ name on screens where it is not required - | 1d | 2006-04-05 | 2006-04-06 | 47 | 15.5d | 0d | Nick | 8h |  |
| 81 | 1.3.3.3.2.3 | #235 - Make comments that are submitted in the retrieval page searchable | 2d | 2006-04-05 | 2006-04-07 |  | 15.5d |  | Sima | 16h |  |
| 82 | 1.3.3.3.2.4 | #237 - Add the ability to remove an image from Eng. Trans, Gen. Seg or Targ. Mod. | 1d | 2006-04-06 | 2006-04-07 | 80 | 15.5d |  | Nick | 8h |  |
| 83 | 1.3.3.3.2.5 | #272 - Add diagnosis to the summary on the histopath search page | 0.5d | 2006-04-12 | 2006-04-12 | 77 | 0d |  | David | 4h |  |
| 84 | 1.3.3.3.2.6 | #289 - information if mouse is a tool mouse doesn't show up on mod char search page | 0.5d | 2006-04-05 | 2006-04-05 | 49 | 17d |  | Sima | 4h |  |
| 85 | 1.3.3.3.2.7 | #295 - Verify all free text fields allow html markup | 1d | 2006-04-12 | 2006-04-13 | 83 | 0d |  | David | 8h |  |
| 86 | 1.3.3.3.2.8 | #297 - Missed camod:shorten tag for therapeutic approaches | 0.5d | 2006-04-13 | 2006-04-14 | 85 | 0d |  | David | 4h |  |
| 87 | 1.3.3.3.2.9 | #356 - Find a solution for entering the nomenclature and genotype information. | 2w | 2006-04-14 | 2006-04-28 | 86 | 0d |  |  |  |  |
| 88 | 1.3.3.3.2.10 | #371 - Force/validate lowercase usernames on entry | 0.5d | 2006-04-28 | 2006-04-28 | 87, 86 | 0d |  | David | 4h |  |
| 89 | 1.3.3.3.3 | **EVS Tree modification** | 10d | 2006-04-05 | 2006-04-19 |  | 7.5d |  |  |  |  |
| 90 | 1.3.3.3.3.1 | #280 - EVS Tree - show species specific anatomy vocabularies | 1w | 2006-04-05 | 2006-04-12 |  | 12.5d |  |  |  |  |
| 91 | 1.3.3.3.3.2 | #281 - EVS Tree - utilize the staining vocabulary | 3d | 2006-04-05 | 2006-04-10 |  | 14.5d |  |  |  |  |
| 92 | 1.3.3.3.3.3 | #371 - EVS Tree- make display of EVS tree generic | 2w | 2006-04-05 | 2006-04-19 |  | 7.5d |  |  |  |  |
| 93 | 1.3.3.4 | Tag build and deploy to QA server | 3d | 2006-04-28 | 2006-05-03 | 73 | 0d |  | QA; David [50%] | 36h |  |
| 94 | 1.3.3.5 | Test | 3d | 2006-05-03 | 2006-05-08 | 93 | 42.5d | 0d | QA; Ulli | 48h |  |
| 95 | 1.3.4 | Milestone: Iteration2 completed | 3d | 2006-05-08 | 2006-05-11 | 94 | 42.5d |  |  |  |  |

| ID | WBS | Task | Duration | Start | Finish | Predecessors | Total slack | Resources | Work |
| --- | --- | --- | --- | --- | --- | --- | --- | --- | --- |
| 96 | 1.3.5 | **Iteration 3** | 25d | 2006-05-03 | 2006-06-07 | 93 | 0d |  | 512h |
| 97 | 1.3.5.1 | Requirements Analysis | 2.14d | 2006-05-03 | 2006-05-05 |  | 46.36d | Nick [50%]; Sima [50%]; David [50%] | 20h |
| 98 | 1.3.5.2 | Design | 3d | 2006-05-03 | 2006-05-08 |  | 45.5d | Srini [50%] | 12h |
| 99 | 1.3.5.3 | **Code** | 19d | 2006-05-03 | 2006-05-30 |  | 0d |  | 396h |
| 100 | 1.3.5.3.1 | **caMOD usibility enhancements** | 19d | 2006-05-03 | 2006-05-30 |  | 0d |  | 328h |
| 101 | 1.3.5.3.1.1 | #261 - Add the ability to save search queries for reuse | 2w | 2006-05-03 | 2006-05-17 |  | 9d | Nick [50%]; Sima [50%]; David [25%] | 100h |
| 102 | 1.3.5.3.1.2 | #320 - Find ways to speed up the entry of organs and diagnoses | 1w | 2006-05-03 | 2006-05-10 |  | 0d | David | 40h |
| 103 | 1.3.5.3.1.3 | #321 - Log updates to Edited-approved models | 2w | 2006-05-10 | 2006-05-24 | 102 | 0d | David | 80h |
| 104 | 1.3.5.3.1.4 | #329 - Data Issue - current genetic background | 2d | 2006-05-24 | 2006-05-26 | 103 | 0d | David [50%]; Ulli [25%] | 12h |
| 105 | 1.3.5.3.1.5 | #330 - Display the DTP in vivo and yeast models as animal models | 1d | 2006-05-26 | 2006-05-29 | 104 | 0d | David | 8h |
| 106 | 1.3.5.3.1.6 | #347 - Move the e-mail code to its own utility - Consolidate | 1d | 2006-05-29 | 2006-05-30 | 105 | 0d | David | 8h |
| 107 | 1.3.5.3.1.7 | **#369 - Create remote interface for caMOD object model** | 10d | 2006-05-03 | 2006-05-17 |  | 9d |  | 80h |
| 108 | 1.3.5.3.1.7.1 | #360 - steps to make caMod OM depreciated in caCore | 2w | 2006-05-03 | 2006-05-17 |  | 9d | David | 80h |
| 109 | 1.3.5.3.2 | **caMOD enhancements** | 10d | 2006-05-03 | 2006-05-17 |  | 9d |  | 68h |
| 110 | 1.3.5.3.2.1 | #67 - Access to site without accepting the agreement | 1d | 2006-05-03 | 2006-05-04 |  | 18d | Sima | 8h |
| 111 | 1.3.5.3.2.2 | #87 - Date Formating issue | 0.5d | 2006-05-03 | 2006-05-04 |  | 18.5d | Nick | 4h |
| 112 | 1.3.5.3.2.3 | #132 - For existing sid images, get the URL from the thumbnail | 1d | 2006-05-03 | 2006-05-04 |  | 18d | David | 8h |
| 113 | 1.3.5.3.2.4 | #229 - Add help button (=link to online help) to the title of every page | 0.5d | 2006-05-03 | 2006-05-04 |  | 18.5d | David | 4h |
| 114 | 1.3.5.3.2.5 | #245 - Admin part - display messages when no search results returned | 0.5d | 2006-05-03 | 2006-05-04 |  | 18.5d | David | 4h |
| 115 | 1.3.5.3.2.6 | #290 - Cell Line Publication - throws uncaught connection error | 1d | 2006-05-03 | 2006-05-04 |  | 18d | Nick | 8h |
| 116 | 1.3.5.3.2.7 | #301 - Add link to additional info about clinical trials such as types of cancer the trial is conducted for | 1d | 2006-05-03 | 2006-05-04 |  | 18d | Sima | 8h |
| 117 | 1.3.5.3.2.8 | #302 - Allow user to search for metastasis in specific organ or for metastatic models in general on Advanced Search page | 1d | 2006-05-03 | 2006-05-04 |  | 18d | Sima | 8h |
| 118 | 1.3.5.3.2.9 | #314 - make comments fields on all pages searchable | 1d | 2006-05-03 | 2006-05-04 |  | 18d | Nick | 8h |
| 119 | 1.3.5.3.2.10 | #335 - The inhibition rate field in the screening_results table for the yeast data is not used. | 1d | 2006-05-03 | 2006-05-04 |  | 18d | Nick | 8h |
| 120 | 1.3.5.3.2.11 | #375 - Make caMOD available on download center | 2w | 2006-05-03 | 2006-05-17 |  | 9d |  |  |
| 121 | 1.3.5.4 | Tag build and deploy to QA server | 3d | 2006-05-30 | 2006-06-02 | 99 | 0d | QA; David [50%] | 36h |
| 122 | 1.3.5.5 | Test | 3d | 2006-06-02 | 2006-06-07 | 121 | 0d | QA; Ulli | 48h |
| 123 | 1.3.6 | Milestone: Iteration3 completed | 3d | 2006-06-07 | 2006-06-12 | 122 | 0d |  |  |

| ID | WBS | Task | Type | Duration | Start | Finish | Predecessors | Total slack | Free slack | Resources | Work |
| --- | --- | --- | --- | --- | --- | --- | --- | --- | --- | --- | --- |
| 124 | 1.3.7 | **Integration Testing Schedule** |  | 14.5d | 2006-06-12 | 2006-07-03 | 123 | 0d |  | QA | 1032h |
| 125 | 1.3.7.1 | **Develop Test Plan** |  | 10d | 2006-06-12 | 2006-06-26 |  | 10.5d |  | QA | 344h |
| 126 | 1.3.7.1.1 | Develop Iteration 1 Test Plan |  | 6d | 2006-06-12 | 2006-06-20 |  | 14.5d |  | QA; Davidi [50%] | 72h |
| 127 | 1.3.7.1.2 | Develop Iteration 2 Test Plan |  | 6d | 2006-06-12 | 2006-06-20 |  | 14.5d |  | QA; David [50%] | 72h |
| 128 | 1.3.7.1.3 | Develop Integration Test Plan |  | 10d | 2006-06-12 | 2006-06-26 |  | 10.5d |  | QA; David [50%] | 120h |
| 129 | 1.3.7.2 | Deploy All Iterations to Development Server |  | 1d | 2006-06-12 | 2006-06-13 |  | 19.5d |  | QA | 8h |
| 130 | 1.3.7.3 | Development Test All Iterations |  | 5.6d | 2006-06-12 | 2006-06-20 |  | 14.9d |  | QA; Ulli; Nick; Sima; David | 224h |
| 131 | 1.3.7.4 | Deploy All Iteration to Integration Test Server |  | 1.5d | 2006-06-12 | 2006-06-14 |  | 0d |  | QA | 12h |
| 132 | 1.3.7.5 | Integration Test All Iterations |  | 8d | 2006-06-12 | 2006-06-22 |  | 12.5d |  | QA; Ulli | 128h |
| 133 | 1.3.7.6 | Deploy All Iterations to Staging Server |  | 1d | 2006-06-14 | 2006-06-15 | 131 | 0d |  | QA | 8h |
| 134 | 1.3.7.7 | Test All Iterations |  | 12d | 2006-06-15 | 2006-07-03 | 133 | 0d |  | CCMG; Ulli | 192h |
| 135 | 1.4 | **Transition** |  | 6d | 2006-07-03 | 2006-07-11 | 134 | 0d |  |  | 135.6h |
| 136 | 1.4.1 | Code Freeze |  | 1d | 2006-07-03 | 2006-07-04 | 123 | 5d |  | David | 8h |
| 137 | 1.4.2 | Deploy Iteration to Production |  | 2d | 2006-07-03 | 2006-07-05 | 134 | 4d | 0d | QA | 16h |
| 138 | 1.4.3 | **Document Iteration** |  | 6d | 2006-07-03 | 2006-07-11 |  | 0d |  |  | 111.6h |
| 139 | 1.4.3.1 | Update User Guides |  | 6d | 2006-07-03 | 2006-07-11 | 123 | 0d |  | Ulli [50%]; Jill [50%] | 44h |
| 140 | 1.4.3.2 | Update technical / design documentation |  | 3.56d | 2006-07-03 | 2006-07-06 |  | 2.44d |  | Ulli [50%]; Srini [50%]; Jill [50%]; David [50%] | 49.6h |
| 141 | 1.4.3.3 | Regenerate JavaDocs |  | 0.25d | 2006-07-03 | 2006-07-03 |  | 5.75d |  | David | 2h |
| 142 | 1.4.3.4 | Create Release Notes |  | 0.5d | 2006-07-03 | 2006-07-03 |  | 5.5d |  | Ulli | 4h |
| 143 | 1.4.3.5 | Create Known Issues document |  | 0.5d | 2006-07-03 | 2006-07-03 |  | 5.5d |  | Ulli | 4h |
| 144 | 1.4.3.6 | Create Fixed defects document |  | 0.5d | 2006-07-03 | 2006-07-03 |  | 5.5d |  | Ulli | 4h |
| 145 | 1.4.3.7 | Create What's New Document |  | 0.5d | 2006-07-03 | 2006-07-03 |  | 5.5d |  | Ulli | 4h |
| 146 | 1.5 | Milestone: Complete Version 2.1 | milestone | 0d | 2006-07-05 | 2006-07-05 | 137 | 4d |  | Ulli |  |
