# caMOD 2.2

Schedule from MS Project, 2007-09-28 to 2008-01-11, A marks actual dates.
SAIC

## Calendars

- Standard: Mon-Fri 08:00-12:00, 13:00-17:00; Sat-Sun off.

## Resources

| Resource |
| --- |
| GuruswamiS |
| NCICB |
| Anand |
| Ulli |
| QA |
| Sima |
| DBA |
| 2nd Resource |
| Sima |
| Srini |
| Grid Resource |
| App Support |
| Systems |
| Jill |

## Schedule

| ID | WBS | Task | Type | Duration | Start | Finish | Predecessors | Complete | Remaining | Total slack | Free slack | Constraint | Resources | Work | Actual work |
| --- | --- | --- | --- | --- | --- | --- | --- | --- | --- | --- | --- | --- | --- | --- | --- |
| 1 | 1 | **caMOD 2.4 Release** |  | 76d? | 2007-09-28 A | 2008-01-11 |  | 47% | 40.11d? | 0d |  |  |  | 1104h | 523.2h |
| 2 | 1.1 | **Inception Phase** |  | 11d | 2007-09-28 | 2007-10-12 |  |  |  | 54d |  |  |  | 48h |  |
| 3 | 1.1.1 | Use Case and Design Doc (caBIG template) |  | 2w | 2007-09-28 | 2007-10-11 |  |  |  | 57d | 0d |  | Sima [50%] | 40h |  |
| 4 | 1.1.2 | Review use cases / design with the "Review Board" |  | 1d | 2007-10-12 | 2007-10-12 | 3 |  |  | 58d | 0d |  | Sima | 8h |  |
| 5 | 1.2 | Milestone: Completed Design document | milestone | 0d | 2007-10-12 | 2007-10-12 | 4 |  |  | 58d | 0d |  | Anand |  |  |
| 6 | 1.3 | **Elaboration Phase** |  | 59d | 2007-10-15 A | 2008-01-03 |  | 89% | 6.7d | 6d |  |  |  | 176h | 156h |
| 7 | 1.3.1 | Incorporate changes to the Object Model |  | 3d | 2007-10-15 A | 2007-10-22 A | 5 | 100% |  |  |  |  | Ulli | 24h | 24h |
| 8 | 1.3.2 | Make code changes due to Object Model changes |  | 5d | 2007-10-23 A | 2007-10-29 A | 7 | 100% |  |  |  |  | Sima | 40h | 40h |
| 9 | 1.3.3 | Milestone: Soft Freeze Object Model |  | 2d | 2007-10-30 A | 2007-10-31 A | 8 | 100% |  |  |  |  | Ulli | 16h | 16h |
| 10 | 1.3.4 | Round Trip, Import XMI into EA |  | 2d | 2007-11-01 A | 2007-11-02 A | 9 | 100% |  |  |  |  | Ulli | 16h | 16h |
| 11 | 1.3.5 | screen models |  | 10d | 2007-12-11 A | 2008-01-03 | 10 | 75% | 2.5d | 6d |  | finish no earlier than 2008-01-03 | Ulli | 80h | 60h |
| 12 | 1.4 | Milestone: Model Registered in CADSR | milestone | 0d | 2007-09-28 | 2007-09-28 |  |  |  | 58d |  |  |  |  |  |
| 13 | 1.5 | **iteration 1:** |  | 65d? | 2007-10-15 A | 2008-01-11 |  | 42% | 37.7d? | 0d |  |  |  | 880h | 367.2h |
| 14 | 1.5.1 | **EVSTree Application-side work** |  | 23d | 2007-11-01 A | 2007-12-03 |  | 90% | 2.3d | 29d |  |  | Sima | 352h | 307.2h |
| 15 | 1.5.1.1 | **Implementation and Testing** |  | 23d | 2007-11-01 A | 2007-12-03 |  | 90% | 2.3d | 29d |  |  | Sima | 208h | 177.6h |
| 16 | 1.5.1.1.1 | Cancelling selection gives error messages in Mozilla and no response in IE (#7451) |  | 4d | 2007-11-01 A | 2007-11-06 | 9 | 50% | 2d | 48d |  |  | Sima | 32h | 16h |
| 17 | 1.5.1.1.2 | Remove link for search results (#10818) |  | 0.8w | 2007-11-12 A | 2007-11-15 A | 16 | 100% |  |  |  |  | Sima | 32h | 32h |
| 18 | 1.5.1.1.3 | Search does not work for rat anatomy (#7790) |  | 3d | 2007-11-16 A | 2007-11-20 A | 17 | 100% |  |  |  |  |  |  |  |
| 19 | 1.5.1.1.4 | Search does not work for zebrafish vocabularies (#7387) |  | 3d | 2007-11-21 A | 2007-11-23 A | 18 | 100% |  |  |  |  |  |  |  |
| 20 | 1.5.1.1.5 | Alternate search terms are only shown when matches in the existing trees are found (#9277) |  | 1d | 2007-11-26 A | 2007-11-26 A | 19 | 100% |  |  |  |  |  |  |  |
| 21 | 1.5.1.1.6 | Tree doesn't jump to the highlighted term after performing search (#9274) |  | 5d | 2007-11-27 A | 2007-12-03 A | 20 | 100% |  |  |  |  |  |  |  |
| 22 | 1.5.2 | **caMOD - caELMIR Integration Tasks** |  | 15d | 2007-12-04 A | 2007-12-24 |  | 50% | 7.5d | 14d |  |  |  | 120h | 60h |
| 23 | 1.5.2.1 | Implement Therapy Screen for caELMIR data (#8816) |  | 2w | 2007-12-04 A | 2007-12-17 | 21 | 50% | 1w | 16.5d | 0d |  | Sima | 80h | 40h |
| 24 | 1.5.2.2 | Connecting to caELMIR to return results (#8816) |  | 1w | 2007-12-18 A | 2007-12-24 | 23 | 50% | 0.5w | 14d |  |  | Sima | 40h | 20h |

| ID | WBS | Task | Type | Duration | Start | Finish | Predecessors | Complete | Total slack | Free slack | Constraint | Resources | Work |
| --- | --- | --- | --- | --- | --- | --- | --- | --- | --- | --- | --- | --- | --- |
| 25 | 1.5.3 | **caMOD** |  | 3d? | 2007-12-03 A | 2007-12-05 A |  | 100% |  |  |  |  |  |
| 26 | 1.5.3.1 | Change publication table on cell line and therapy search pages (#10683) |  | 3d? | 2007-12-03 A | 2007-12-05 A |  | 100% |  |  | finish no earlier than 2007-12-05 |  |  |
| 27 | 1.5.3.2 | Add summary table to newly designed publication search page (#10679) |  | 3d? | 2007-12-03 A | 2007-12-05 A |  | 100% |  |  | start no earlier than 2007-12-03 |  |  |
| 30 | 1.5.4 | **Testing** |  | 65d | 2007-10-15 | 2008-01-11 |  |  | 0d |  |  |  | 408h |
| 31 | 1.5.4.1 | Deploy iteration on DEV Server |  | 2d | 2007-12-06 | 2007-12-07 | 25 |  | 3d | 0d |  | Sima | 16h |
| 32 | 1.5.4.2 | Test on DEV tier |  | 1w | 2007-12-10 | 2007-12-14 | 31 |  | 3d | 0d |  | Ulli; Sima | 80h |
| 33 | 1.5.4.3 | **Transition Phase** |  | 65d | 2007-10-15 | 2008-01-11 |  |  | 0d |  |  |  | 312h |
| 34 | 1.5.4.3.1 | **QA** |  | 10d | 2007-10-15 | 2007-10-26 | 5 |  | 55d |  |  | QA | 160h |
| 35 | 1.5.4.3.1.1 | Finalize Testplan |  | 1w | 2007-10-15 | 2007-10-19 | 5 |  | 55d | 0d |  | QA | 40h |
| 36 | 1.5.4.3.1.2 | Finalize Test Cases |  | 1w | 2007-10-22 | 2007-10-26 | 35 |  | 55d |  |  | QA | 40h |
| 37 | 1.5.4.3.2 | **Deploy** |  | 20d | 2007-12-17 | 2008-01-11 |  |  | 0d |  |  |  | 152h |
| 38 | 1.5.4.3.2.1 | **QA Server Deployment** |  | 10d | 2007-12-17 | 2007-12-28 | 32 |  | 3d |  |  |  | 80h |
| 39 | 1.5.4.3.2.1.1 | QA Testing |  | 2w | 2007-12-17 | 2007-12-28 |  |  | 3d |  |  | QA | 80h |
| 40 | 1.5.4.3.2.2 | **Staging Server Deployment** |  | 5d | 2008-01-03 | 2008-01-09 | 39 |  | 0d |  |  |  | 40h |
| 41 | 1.5.4.3.2.2.1 | Staging Testing |  | 1w | 2008-01-03 | 2008-01-09 |  |  | 0d |  |  | Ulli | 40h |
| 42 | 1.5.4.3.2.3 | **Production Server Deployment** |  | 2d | 2008-01-10 | 2008-01-11 | 41 |  | 0d |  |  | Sima | 32h |
| 43 | 1.5.4.3.2.3.1 | Production Verification |  | 2d | 2008-01-10 | 2008-01-11 |  |  | 0d |  |  | Ulli | 16h |
| 44 | 1.5.4.4 | caMOD 2.4 - Closeout | milestone | 0d | 2008-01-11 | 2008-01-11 | 43 |  | 0d |  |  |  |  |
