# camod Release 2.6.0

Schedule from MS Project, 2009-06-15 to 2009-12-29.
NCI

## Calendars

- Standard: Mon-Fri 08:00-12:00, 13:00-17:00; Sat-Sun off. Exceptions (off unless hours are given): 2009-07-03, 2009-09-07, 2009-10-12, 2009-11-11, 2009-11-26 to 2009-11-27, 2009-12-25.

## Resources

| Resource |
| --- |
| Sima |
| Ulli |
| Juli |
| Maki |
| Kavitha |
| QA |
| Jill |
| Security Team |
| Systems |
| Lalitha |

## Schedule

| ID | WBS | Task | Type | Duration | Start | Finish | Predecessors | Total slack | Free slack | Constraint | Resources | Work |
| --- | --- | --- | --- | --- | --- | --- | --- | --- | --- | --- | --- | --- |
| 1 | 1 | **caMOD 2.6.0Release** |  | 135d? | 2009-06-15 | 2009-12-29 |  | 0d |  |  |  | 1868h |
| 2 | 1.1 | **Inception Phase** |  | 6d | 2009-06-15 | 2009-06-22 |  | 0d |  |  |  | 104h |
| 3 | 1.1.1 | Scope 2.6.0 Release |  | 3d | 2009-06-15 | 2009-06-17 |  | 0d |  | start no earlier than 2009-06-15 | Sima; Ulli | 48h |
| 4 | 1.1.2 | Schedule 2.6.0 Release |  | 3d | 2009-06-18 | 2009-06-22 | 3 | 0d |  |  | Sima; Maki; Ulli | 56h |
| 5 | 1.1.3 | Milestone: Inception Completed | milestone | 0d | 2009-06-22 | 2009-06-22 | 4 | 0d |  |  |  |  |
| 6 | 1.2 | **Elaboration Phase** |  | 6d | 2009-06-23 | 2009-06-30 | 5 | 0d |  |  |  | 64h |
| 7 | 1.2.1 | Use Case and Design Doc (caBIG template) |  | 5d | 2009-06-23 | 2009-06-29 |  | 0d |  |  | Sima | 40h |
| 8 | 1.2.2 | Review use cases / design with the "Review Board" |  | 1d | 2009-06-30 | 2009-06-30 | 7 | 0d |  | finish no earlier than 2009-01-27 | Juli; Maki; Ulli | 24h |
| 9 | 1.2.3 | Milestone: Elaboration Completed | milestone | 0d | 2009-06-30 | 2009-06-30 | 7, 8 | 0d |  |  |  |  |
| 10 | 1.3 | **Construction Phase** |  | 109d? | 2009-07-01 | 2009-12-08 | 6 | 0d |  |  |  | 1156h |
| 11 | 1.3.1 | **BDAfy caMOD** |  | 31d | 2009-07-01 | 2009-08-13 |  | 0d |  |  |  | 340h |
| 12 | 1.3.1.1 | **Project set up** |  | 1d | 2009-07-01 | 2009-07-01 |  | 0d |  |  |  | 48h |
| 13 | 1.3.1.1.1 | CVS to SVN move |  | 1d | 2009-07-01 | 2009-07-01 |  | 0d |  |  | Sima; Maki | 16h |
| 14 | 1.3.1.1.2 | Request CI server |  | 1d | 2009-07-01 | 2009-07-01 |  | 0d |  |  | Sima; Maki | 16h |
| 15 | 1.3.1.1.3 | Request each tier to be provisioned |  | 1d | 2009-07-01 | 2009-07-01 |  | 0d |  |  | Sima; Maki | 16h |
| 16 | 1.3.1.2 | Copy development checklist and recreate for project and submit to BDA team. |  | 1d | 2009-07-02 | 2009-07-02 | 12 | 0d |  |  | Sima | 8h |
| 17 | 1.3.1.3 | Create a gap analysis based on BDA Checklist and submit to the BDA team. |  | 1d | 2009-07-06 | 2009-07-06 | 16 | 0d |  |  | Sima | 8h |
| 18 | 1.3.1.4 | Attend BDA Overview Session (Session 1) |  | 1d | 2009-07-07 | 2009-07-07 | 17 | 0d |  |  | Sima | 8h |
| 19 | 1.3.1.5 | Implement BDA on Java Petstore (to get familiar with scripts/features) |  | 1d | 2009-07-08 | 2009-07-08 | 18 | 0d |  |  | Sima | 8h |
| 20 | 1.3.1.6 | Complete and submit a draft copy of this project plan to the BDA team prior to session 2. |  | 1d | 2009-07-02 | 2009-07-02 | 12 | 119d | 0d |  | Maki | 8h |
| 21 | 1.3.1.7 | Attend BDA Implementation Session (Session 2) |  | 1d | 2009-07-09 | 2009-07-09 | 19 | 0d |  |  | Sima | 8h |
| 22 | 1.3.1.8 | View BDA screencasts (as necessary) |  | 1d | 2009-07-06 | 2009-07-06 | 20 | 120d |  |  | Sima | 8h |
| 23 | 1.3.1.9 | Create or update your Architecture Review Checklist (ARC) (See example) |  | 1d | 2009-07-10 | 2009-07-10 | 21 | 0d |  |  | Sima | 8h |
| 24 | 1.3.1.10 | Submit your wiki based BDA Project Plan to Systems, BDA, and the Government Sponsor. |  | 1d | 2009-07-06 | 2009-07-06 | 20 | 119d | 0d |  | Maki | 8h |
| 25 | 1.3.1.11 | Create Systems request (see Requesting CI Server section) for provisioning CI VM. |  | 1d | 2009-07-07 | 2009-07-07 | 24 | 119d |  |  | Maki | 8h |
| 26 | 1.3.1.12 | Attend a Project Plan Review Meeting with, Development, Systems, BDA, and the Government Sponsor to come up with agreed upon due dates of tasks. |  | 1d | 2009-07-07 | 2009-07-07 | 24 | 119d |  |  | Maki; Sima | 16h |
| 27 | 1.3.1.13 | Submit ARC request to Systems and Attend ARC meeting (See example) and get approval. |  | 1d | 2009-07-13 | 2009-07-13 | 23 | 0d |  |  | Sima | 8h |
| 28 | 1.3.1.14 | Create Systems request (see Requesting a Tier section) for provisioning DEV environment, AHP Track, access to scm-private svn repository |  | 1d | 2009-07-14 | 2009-07-14 | 27 | 0d |  |  | Sima | 8h |
| 29 | 1.3.1.15 | Write up current and complete installation instructions |  | 1d | 2009-07-15 | 2009-07-15 | 28 | 0d |  |  | Sima | 8h |
| 30 | 1.3.1.16 | Meet with BDA to review your installation instructions and do gap analysis against BDA templates and Macros |  | 1.5d | 2009-07-16 | 2009-07-17 | 29 | 0d |  |  | Sima | 12h |
| 31 | 1.3.1.17 | Modify directory structure |  | 1d | 2009-07-17 | 2009-07-20 | 30 | 0d |  |  | Sima | 8h |
| 32 | 1.3.1.18 | Identify and externalize per-environment properties into .properties files. See BDA Template-Properties for an explanation |  | 1d | 2009-07-20 | 2009-07-21 | 31 | 0d |  |  | Sima | 8h |
| 33 | 1.3.1.19 | Implement BDA templates and macros for your project (See BDA Template Scripts - How to implement) |  | 1d | 2009-07-21 | 2009-07-22 | 32 | 0d |  |  | Sima | 8h |
| 34 | 1.3.1.20 | Eliminate build script duality (duplication between master build scripts and subproject build scripts. See BDA Build Script Standards) |  | 1d | 2009-07-22 | 2009-07-23 | 33 | 0d |  |  | Sima | 8h |
| 35 | 1.3.1.21 | Verify build/deployment is JADS compatible (Install must be JAD compatible) |  | 1d | 2009-07-23 | 2009-07-24 | 34 | 0d |  |  | Sima | 8h |
| 36 | 1.3.1.22 | Setup CI Server (How to Install and Configure Hudson |  | 1d | 2009-07-24 | 2009-07-27 | 35 | 0d |  |  | Sima | 8h |
| 37 | 1.3.1.23 | First Build to Dev - Test the Command Line Deployment in DEV environment |  | 1d | 2009-07-27 | 2009-07-28 | 36 | 0d |  |  | Sima | 8h |
| 38 | 1.3.1.24 | Build Management implementation in DEV target environment (AntHill Pro Setup) |  | 1d | 2009-07-28 | 2009-07-29 | 37 | 0d |  |  | Sima | 8h |
| 39 | 1.3.1.25 | Create Systems request for provisioning QA environment, AHP Track, access to scm-private svn repository |  | 1d | 2009-07-29 | 2009-07-30 | 38 | 0d |  |  | Sima | 8h |
| 40 | 1.3.1.26 | Testing/Static Analysis Customization |  | 5d | 2009-07-30 | 2009-08-06 | 39 | 0d |  |  | Sima | 40h |
| 41 | 1.3.1.27 | Create wiki-based deployment instructions (based on template ) |  | 1d | 2009-08-06 | 2009-08-07 | 40 | 0d |  |  | Sima | 8h |
| 42 | 1.3.1.28 | First Deploy to QA -Test the Command Line Deployment in QA environment |  | 1d | 2009-08-07 | 2009-08-10 | 41 | 0d |  |  | Sima | 8h |
| 43 | 1.3.1.29 | Build Management implementation in QA (AntHill Pro Setup) |  | 1d | 2009-08-10 | 2009-08-11 | 42 | 0d |  |  | Sima | 8h |
| 44 | 1.3.1.30 | Create Systems request for provisioning STAGE environment, AHP Track, access to scm-private svn repository |  | 1d | 2009-08-11 | 2009-08-12 | 43 | 0d |  |  | Sima | 8h |
| 45 | 1.3.1.31 | Configure nightly AntHill Pro track DEV |  | 1d | 2009-08-12 | 2009-08-13 | 44 | 0d |  |  | Sima | 8h |
| 46 | 1.3.1.32 | Ask BDA team to add your project to BDA Certification Dashboard |  | 0.25d | 2009-08-13 | 2009-08-13 | 45 | 92.25d |  |  | Sima | 2h |
| 47 | 1.3.1.33 | Request Systems team to configure STAGE deployment in AntHill Pro |  | 0.25d | 2009-08-13 | 2009-08-13 | 45 | 92d | 0d |  | Sima | 2h |
| 48 | 1.3.1.34 | Request Systems to perform dry-run deployment in STAGE target environment by following Build Promotion Checklist |  | 0.25d | 2009-08-13 | 2009-08-13 | 47 | 92d |  |  | Sima | 2h |
| 49 | 1.3.1.35 | Create Systems requests for provisioning PROD environment, AHP Track, access to scm-private svn repository |  | 0.25d | 2009-08-13 | 2009-08-13 | 45 | 0d |  |  | Sima | 2h |
| 50 | 1.3.1.36 | Milestone: caMOD BDA certified | milestone | 0d | 2009-08-13 | 2009-08-13 | 49 | 0d |  |  |  |  |

| ID | WBS | Task | Type | Duration | Start | Finish | Predecessors | Total slack | Free slack | Resources | Work |
| --- | --- | --- | --- | --- | --- | --- | --- | --- | --- | --- | --- |
| 51 | 1.3.2 | **BDAfy EVSTree** |  | 27d | 2009-08-13 | 2009-09-22 | 50 | 0d |  |  | 308h |
| 52 | 1.3.2.1 | Milestone: Start EVSTree BDAfication | milestone | 0d | 2009-08-13 | 2009-08-13 | 50 | 88.25d | 0d |  |  |
| 53 | 1.3.2.2 | **Project set up** |  | 1d | 2009-08-13 | 2009-08-14 | 52 | 88.25d | 0d |  | 48h |
| 54 | 1.3.2.2.1 | CVS to SVN move |  | 1d | 2009-08-13 | 2009-08-14 |  | 88.25d |  | Sima; Maki | 16h |
| 55 | 1.3.2.2.2 | Request CI server |  | 1d | 2009-08-13 | 2009-08-14 |  | 88.25d |  | Sima; Maki | 16h |
| 56 | 1.3.2.2.3 | Request each tier to be provisioned |  | 1d | 2009-08-13 | 2009-08-14 |  | 88.25d |  | Sima; Maki | 16h |
| 57 | 1.3.2.3 | Copy development checklist and recreate for project and submit to BDA team. |  | 1d | 2009-08-13 | 2009-08-14 | 50 | 0d |  | Sima | 8h |
| 58 | 1.3.2.4 | Create a gap analysis based on BDA Checklist and submit to the BDA team. |  | 1d | 2009-08-14 | 2009-08-17 | 57 | 0d |  | Sima | 8h |
| 59 | 1.3.2.5 | Complete and submit a draft copy of this project plan to the BDA team prior to session 2. |  | 1d | 2009-08-14 | 2009-08-17 | 53 | 88.25d | 0d | Maki | 8h |
| 60 | 1.3.2.6 | Create or update your Architecture Review Checklist (ARC) (See example) |  | 1d | 2009-08-17 | 2009-08-18 | 58 | 0d |  | Sima | 8h |
| 61 | 1.3.2.7 | Submit your wiki based BDA Project Plan to Systems, BDA, and the Government Sponsor. |  | 1d | 2009-08-17 | 2009-08-18 | 59 | 88.25d | 0d | Maki | 8h |
| 62 | 1.3.2.8 | Create Systems request (see Requesting CI Server section) for provisioning CI VM. |  | 1d | 2009-08-18 | 2009-08-19 | 61 | 88.25d |  | Maki | 8h |
| 63 | 1.3.2.9 | Attend a Project Plan Review Meeting with, Development, Systems, BDA, and the Government Sponsor to come up with agreed upon due dates of tasks. |  | 1d | 2009-08-18 | 2009-08-19 | 61 | 88.25d |  | Maki; Sima | 16h |
| 64 | 1.3.2.10 | Submit ARC request to Systems and Attend ARC meeting (See example) and get approval. |  | 1d | 2009-08-18 | 2009-08-19 | 60 | 0d |  | Sima | 8h |
| 65 | 1.3.2.11 | Create Systems request (see Requesting a Tier section) for provisioning DEV environment, AHP Track, access to scm-private svn repository |  | 1d | 2009-08-19 | 2009-08-20 | 64 | 0d |  | Sima | 8h |
| 66 | 1.3.2.12 | Write up current and complete installation instructions |  | 1d | 2009-08-20 | 2009-08-21 | 65 | 0d |  | Sima | 8h |
| 67 | 1.3.2.13 | Meet with BDA to review your installation instructions and do gap analysis against BDA templates and Macros |  | 1.5d | 2009-08-21 | 2009-08-25 | 66 | 0d |  | Sima | 12h |
| 68 | 1.3.2.14 | Modify directory structure |  | 1d | 2009-08-25 | 2009-08-26 | 67 | 0d |  | Sima | 8h |
| 69 | 1.3.2.15 | Identify and externalize per-environment properties into .properties files. See BDA Template-Properties for an explanation |  | 1d | 2009-08-26 | 2009-08-27 | 68 | 0d |  | Sima | 8h |
| 70 | 1.3.2.16 | Implement BDA templates and macros for your project (See BDA Template Scripts - How to implement) |  | 1d | 2009-08-27 | 2009-08-28 | 69 | 0d |  | Sima | 8h |
| 71 | 1.3.2.17 | Eliminate build script duality (duplication between master build scripts and subproject build scripts. See BDA Build Script Standards) |  | 1d | 2009-08-28 | 2009-08-31 | 70 | 0d |  | Sima | 8h |
| 72 | 1.3.2.18 | Verify build/deployment is JADS compatible (Install must be JAD compatible) |  | 1d | 2009-08-31 | 2009-09-01 | 71 | 0d |  | Sima | 8h |
| 73 | 1.3.2.19 | Setup CI Server (How to Install and Configure Hudson |  | 1d | 2009-09-01 | 2009-09-02 | 72 | 0d |  | Sima | 8h |
| 74 | 1.3.2.20 | First Build to Dev - Test the Command Line Deployment in DEV environment |  | 1d | 2009-09-02 | 2009-09-03 | 73 | 0d |  | Sima | 8h |
| 75 | 1.3.2.21 | Build Management implementation in DEV target environment (AntHill Pro Setup) |  | 1d | 2009-09-03 | 2009-09-04 | 74 | 0d |  | Sima | 8h |
| 76 | 1.3.2.22 | Create Systems request for provisioning QA environment, AHP Track, access to scm-private svn repository |  | 1d | 2009-09-04 | 2009-09-08 | 75 | 0d |  | Sima | 8h |
| 77 | 1.3.2.23 | Testing/Static Analysis Customization |  | 5d | 2009-09-08 | 2009-09-15 | 76 | 0d |  | Sima | 40h |
| 78 | 1.3.2.24 | Create wiki-based deployment instructions (based on template ) |  | 1d | 2009-09-15 | 2009-09-16 | 77 | 0d |  | Sima | 8h |
| 79 | 1.3.2.25 | First Deploy to QA -Test the Command Line Deployment in QA environment |  | 1d | 2009-09-16 | 2009-09-17 | 78 | 0d |  | Sima | 8h |
| 80 | 1.3.2.26 | Build Management implementation in QA (AntHill Pro Setup) |  | 1d | 2009-09-17 | 2009-09-18 | 79 | 0d |  | Sima | 8h |
| 81 | 1.3.2.27 | Create Systems request for provisioning STAGE environment, AHP Track, access to scm-private svn repository |  | 1d | 2009-09-18 | 2009-09-21 | 80 | 0d |  | Sima | 8h |
| 82 | 1.3.2.28 | Configure nightly AntHill Pro track DEV |  | 1d | 2009-09-21 | 2009-09-22 | 81 | 0d |  | Sima | 8h |
| 83 | 1.3.2.29 | Ask BDA team to add your project to BDA Certification Dashboard |  | 0.25d | 2009-09-22 | 2009-09-22 | 82 | 65.5d |  | Sima | 2h |
| 84 | 1.3.2.30 | Request Systems team to configure STAGE deployment in AntHill Pro |  | 0.25d | 2009-09-22 | 2009-09-22 | 82 | 65.25d | 0d | Sima | 2h |
| 85 | 1.3.2.31 | Request Systems to perform dry-run deployment in STAGE target environment by following Build Promotion Checklist |  | 0.25d | 2009-09-22 | 2009-09-22 | 84 | 65.25d |  | Sima | 2h |
| 86 | 1.3.2.32 | Create Systems requests for provisioning PROD environment, AHP Track, access to scm-private svn repository |  | 0.25d | 2009-09-22 | 2009-09-22 | 82 | 0d |  | Sima | 2h |
| 87 | 1.3.2.33 | Milestone: caMOD BDA certified | milestone | 0d | 2009-09-22 | 2009-09-22 | 86 | 30.5d |  |  |  |

| ID | WBS | Task | Type | Duration | Start | Finish | Predecessors | Total slack | Free slack | Constraint | Resources | Work |
| --- | --- | --- | --- | --- | --- | --- | --- | --- | --- | --- | --- | --- |
| 88 | 1.3.3 | **Gforge Features** |  | 30.5d? | 2009-09-22 | 2009-11-04 | 86 | 0d |  |  |  | 244h |
| 89 | 1.3.3.1 | 4769 - Provide additional data from MGI - Parsing MGI data |  | 10d | 2009-09-22 | 2009-10-06 |  | 0d |  |  | Sima | 80h |
| 90 | 1.3.3.2 | 4788 - IDEA - redo genetic description page to retrieve data from external source similar to what publication page does with PubMed |  | 10d | 2009-10-06 | 2009-10-21 | 89 | 0d |  |  | Sima | 80h |
| 91 | 1.3.3.3 | 11501 - Add mouse subspecies to caMOD |  | 3d | 2009-10-21 | 2009-10-26 | 90 | 0d |  |  | Sima | 24h |
| 92 | 1.3.3.4 | 19879 - Display PMID number on search page |  | 0.5d | 2009-10-26 | 2009-10-26 | 91 | 0d |  |  | Sima | 4h |
| 93 | 1.3.3.5 | 19876 - Therapy search results page is getting too long |  | 3d | 2009-10-27 | 2009-10-29 | 92 | 0d |  |  | Sima | 24h |
| 94 | 1.3.3.6 | 17041 - Add search for model id to simple and advanced search page |  | 1d? | 2009-10-30 | 2009-10-30 | 93 | 0d |  |  | Sima | 8h |
| 95 | 1.3.3.7 | 20593 - Entered date changes every single time the model characteristics page is changed |  | 2d | 2009-11-02 | 2009-11-03 | 94 | 0d |  |  | Sima | 16h |
| 96 | 1.3.3.8 | 18438 - Change label from MMHCC Repository to NCI Mouse Repository |  | 0.5d | 2009-11-04 | 2009-11-04 | 95 | 0d |  |  | Sima | 4h |
| 97 | 1.3.3.9 | ? - Add privacy statement links (PII) |  | 0.5d | 2009-11-04 | 2009-11-04 | 96 | 0d |  |  | Sima | 4h |
| 98 | 1.3.3.10 | Milestone: Complete Features and Bug fixes | milestone | 0d | 2009-11-04 | 2009-11-04 | 97 | 0d |  |  |  |  |
| 99 | 1.3.4 | Milestone: Complete Development | milestone | 0d | 2009-11-04 | 2009-11-04 | 50, 87, 98 | 0d |  |  |  |  |
| 100 | 1.3.5 | **Testing** |  | 21d | 2009-11-05 | 2009-12-08 | 99 | 0d |  |  |  | 264h |
| 101 | 1.3.5.1 | Update test cases |  | 9d | 2009-11-05 | 2009-11-18 |  | 0d |  |  | Sima; Ulli | 88h |
| 102 | 1.3.5.2 | Deploy iteration on DEV Server |  | 2d | 2009-11-19 | 2009-11-20 | 101 | 0d |  |  | Sima | 16h |
| 103 | 1.3.5.3 | Test on DEV tier |  | 10d | 2009-11-23 | 2009-12-08 | 102 | 0d |  |  | Sima; Ulli | 160h |
| 104 | 1.3.6 | Milestone: Construction Completed | milestone | 0d | 2009-12-08 | 2009-12-08 | 100 | 0d |  |  |  |  |
| 105 | 1.4 | **Transition Phase** |  | 80d | 2009-09-01 | 2009-12-29 |  | 0d |  |  |  | 544h |
| 106 | 1.4.1 | **QA** |  | 33d | 2009-09-01 | 2009-10-19 |  | 42d | 0d |  |  | 264h |
| 107 | 1.4.1.1 | Finalize Testplan |  | 30d | 2009-09-01 | 2009-10-14 |  | 42d | 0d | start no earlier than 2009-09-01 | QA | 240h |
| 108 | 1.4.1.2 | Finalize Test Cases |  | 3d | 2009-10-15 | 2009-10-19 | 107 | 42d |  |  | QA | 24h |
| 109 | 1.4.2 | **Deploy** |  | 14d | 2009-12-09 | 2009-12-29 |  | 0d |  |  |  | 168h |
| 110 | 1.4.2.1 | **QA Server Deployment** |  | 5d | 2009-12-09 | 2009-12-15 | 104 | 0d |  |  |  | 40h |
| 111 | 1.4.2.1.1 | QA Testing |  | 5d | 2009-12-09 | 2009-12-15 | 104 | 0d |  |  | QA | 40h |
| 112 | 1.4.2.1.2 | Milestone: QA Testing Completed | milestone | 0d | 2009-12-15 | 2009-12-15 | 111 | 0d |  |  |  |  |

| ID | WBS | Task | Type | Duration | Start | Finish | Predecessors | Total slack | Resources | Work |
| --- | --- | --- | --- | --- | --- | --- | --- | --- | --- | --- |
| 113 | 1.4.2.2 | **Staging Server Deployment** |  | 5d | 2009-12-16 | 2009-12-22 |  | 0d |  | 80h |
| 114 | 1.4.2.2.1 | Stage Testing |  | 5d | 2009-12-16 | 2009-12-22 | 112 | 0d | QA | 40h |
| 115 | 1.4.2.2.2 | App scan on Stage |  | 5d | 2009-12-16 | 2009-12-22 | 112 | 0d | Security Team | 40h |
| 116 | 1.4.2.2.3 | Milestone: Stage Testing Completed | milestone | 0d | 2009-12-22 | 2009-12-22 | 115, 114 | 0d |  |  |
| 117 | 1.4.2.3 | **Production Server Deployment** |  | 4d | 2009-12-23 | 2009-12-29 |  | 0d |  | 48h |
| 118 | 1.4.2.3.1 | Production server deployment |  | 2d | 2009-12-23 | 2009-12-24 | 116 | 0d | Systems | 16h |
| 119 | 1.4.2.3.2 | Production Verification |  | 2d | 2009-12-28 | 2009-12-29 | 118 | 0d | Sima; Ulli | 32h |
| 120 | 1.4.3 | **Documentation** |  | 5d | 2009-10-20 | 2009-10-26 |  | 42d |  | 40h |
| 121 | 1.4.3.1 | Documentation Edit by Documentation Team |  | 5d | 2009-10-20 | 2009-10-26 | 106 | 42d | Jill | 40h |
| 122 | 1.4.4 | **Content Page Update** |  | 3d | 2009-12-23 | 2009-12-28 |  | 1d |  | 72h |
| 123 | 1.4.4.1 | zope site update |  | 3d | 2009-12-23 | 2009-12-28 | 113 | 1d | Maki; Ulli | 48h |
| 124 | 1.4.4.2 | gForge download site update |  | 3d | 2009-12-23 | 2009-12-28 | 113 | 1d | Sima | 24h |
| 125 | 2 | caMOD 2.6.0 - Closeout | milestone | 0d | 2009-12-29 | 2009-12-29 | 105 | 0d |  |  |
