# camod Release 2.7.0

Schedule from MS Project, 2010-04-26 to 2010-09-09.
NCI

## Calendars

- Standard: Mon-Fri 08:00-12:00, 13:00-17:00; Sat-Sun off. Exceptions (off unless hours are given): 2010-05-31 (Memorial Day), 2010-07-05 (Fourth of July), 2010-09-06 (Labor Day).

## Resources

| Resource |
| --- |
| Sima |
| Ulli |
| Juli |
| Maki |
| Kavitha |
| QA |
| Jill |
| Security Team |
| Systems |
| Lalitha |

## Schedule

| ID | WBS | Task | Type | Duration | Start | Finish | Predecessors | Total slack | Free slack | Constraint | Resources | Work |
| --- | --- | --- | --- | --- | --- | --- | --- | --- | --- | --- | --- | --- |
| 1 | 1 | **caMOD 2.7.0Release** |  | 95.5d | 2010-04-26 | 2010-09-09 |  | 0d |  |  |  | 1276h |
| 2 | 1.1 | **Inception Phase** |  | 6d | 2010-04-26 | 2010-05-03 |  | 0d |  |  |  | 104h |
| 3 | 1.1.1 | Scope 2.6.0 Release |  | 3d | 2010-04-26 | 2010-04-28 |  | 0d |  | start no earlier than 2010-04-26 | Sima; Ulli | 48h |
| 4 | 1.1.2 | Schedule 2.6.0 Release |  | 3d | 2010-04-29 | 2010-05-03 | 3 | 0d |  |  | Sima; Maki; Ulli | 56h |
| 5 | 1.1.3 | Milestone: Inception Completed | milestone | 0d | 2010-05-03 | 2010-05-03 | 4 | 0d |  |  |  |  |
| 6 | 1.2 | **Elaboration Phase** |  | 6d | 2010-05-04 | 2010-05-11 | 5 | 0d |  |  |  | 64h |
| 7 | 1.2.1 | Use Case and Design Doc (caBIG template) |  | 5d | 2010-05-04 | 2010-05-10 |  | 0d |  |  | Sima | 40h |
| 8 | 1.2.2 | Review use cases / design with the "Review Board" |  | 1d | 2010-05-11 | 2010-05-11 | 7 | 0d |  | finish no earlier than 2009-01-27 | Juli; Maki; Ulli | 24h |
| 9 | 1.2.3 | Milestone: Elaboration Completed | milestone | 0d | 2010-05-11 | 2010-05-11 | 7, 8 | 0d |  |  |  |  |
| 10 | 1.3 | **Construction Phase** |  | 57d | 2010-05-12 | 2010-08-02 | 9 | 0d |  |  |  | 624h |
| 11 | 1.3.1 | 25919 - LexEVS Upgrade |  | 7w | 2010-05-12 | 2010-06-30 |  | 0d |  |  | Sima | 280h |
| 12 | 1.3.2 | 25918 - caBio Upgrade |  | 10d | 2010-07-01 | 2010-07-15 | 11 | 0d |  |  | Sima | 80h |
| 13 | 1.3.3 | Milestone: Complete Development | milestone | 0d | 2010-07-15 | 2010-07-15 | 11, 12 | 0d |  |  |  |  |
| 14 | 1.3.4 | **Testing** |  | 22d | 2010-07-01 | 2010-08-02 |  | 0d |  |  |  | 264h |
| 15 | 1.3.4.1 | Update test cases |  | 9d | 2010-07-01 | 2010-07-14 | 11 | 0.5d | 0d |  | Sima; Ulli | 88h |
| 16 | 1.3.4.2 | Deploy iteration on DEV Server |  | 2d | 2010-07-16 | 2010-07-19 | 15, 13 | 0d |  |  | Sima | 16h |
| 17 | 1.3.4.3 | Test on DEV tier |  | 10d | 2010-07-20 | 2010-08-02 | 16 | 0d |  |  | Sima; Ulli | 160h |
| 18 | 1.3.5 | Milestone: Construction Completed | milestone | 0d | 2010-08-02 | 2010-08-02 | 15, 16, 17 | 0d |  |  |  |  |
| 19 | 1.4 | **Transition Phase** |  | 39.5d | 2010-07-15 | 2010-09-09 | 9 | 0d |  |  |  | 484h |
| 20 | 1.4.1 | **QA** |  | 13d | 2010-07-15 | 2010-08-02 |  | 0.5d |  |  |  | 104h |
| 21 | 1.4.1.1 | Finalize Testplan |  | 10d | 2010-07-15 | 2010-07-28 | 15 | 0.5d | 0d | start no earlier than 2009-09-01 | QA | 80h |
| 22 | 1.4.1.2 | Finalize Test Cases |  | 3d | 2010-07-29 | 2010-08-02 | 21 | 0.5d |  |  | QA | 24h |
| 23 | 1.4.2 | **Deploy** |  | 26.5d | 2010-08-03 | 2010-09-09 | 10 | 0d |  |  |  | 268h |
| 24 | 1.4.2.1 | **QA Server Deployment** |  | 10.5d | 2010-08-03 | 2010-08-17 |  | 0d |  |  |  | 84h |
| 25 | 1.4.2.1.1 | QA Deployment |  | 0.5d | 2010-08-03 | 2010-08-03 |  | 0d |  |  | Sima | 4h |
| 26 | 1.4.2.1.2 | QA Testing |  | 10d | 2010-08-03 | 2010-08-17 | 18, 21, 22, 25 | 0d |  |  | QA | 80h |
| 27 | 1.4.2.1.3 | Milestone: QA Testing Completed | milestone | 0d | 2010-08-17 | 2010-08-17 | 26 | 0d |  |  |  |  |

| ID | WBS | Task | Type | Duration | Start | Finish | Predecessors | Total slack | Resources | Work |
| --- | --- | --- | --- | --- | --- | --- | --- | --- | --- | --- |
| 28 | 1.4.2.2 | **Staging Server Deployment** |  | 12d | 2010-08-17 | 2010-09-02 |  | 0d |  | 136h |
| 29 | 1.4.2.2.1 | Stage Deployment |  | 2d | 2010-08-17 | 2010-08-19 | 27 | 0d | Sima | 16h |
| 30 | 1.4.2.2.2 | Stage Testing |  | 5d | 2010-08-19 | 2010-08-26 | 29 | 5d | QA | 40h |
| 31 | 1.4.2.2.3 | App scan on Stage |  | 10d | 2010-08-19 | 2010-09-02 | 29 | 0d | Security Team | 80h |
| 32 | 1.4.2.2.4 | Milestone: Stage Testing Completed | milestone | 0d | 2010-09-02 | 2010-09-02 | 31, 30 | 0d |  |  |
| 33 | 1.4.2.3 | **Production Server Deployment** |  | 4d | 2010-09-02 | 2010-09-09 | 32 | 0d |  | 48h |
| 34 | 1.4.2.3.1 | Production server deployment |  | 2d | 2010-09-02 | 2010-09-07 | 32 | 0d | Systems | 16h |
| 35 | 1.4.2.3.2 | Production Verification |  | 2d | 2010-09-07 | 2010-09-09 | 34 | 0d | Sima; Ulli | 32h |
| 36 | 1.4.3 | **Documentation** |  | 5d | 2010-08-03 | 2010-08-09 |  | 21.5d |  | 40h |
| 37 | 1.4.3.1 | Documentation Edit by Documentation Team |  | 5d | 2010-08-03 | 2010-08-09 | 18 | 21.5d | Jill | 40h |
| 38 | 1.4.4 | **Content Page Update** |  | 3d | 2010-09-02 | 2010-09-08 |  | 1d |  | 72h |
| 39 | 1.4.4.1 | zope site update |  | 3d | 2010-09-02 | 2010-09-08 | 32 | 1d | Maki; Ulli | 48h |
| 40 | 1.4.4.2 | gForge download site update |  | 3d | 2010-09-02 | 2010-09-08 | 32 | 1d | Sima | 24h |
| 41 | 2 | caMOD 2.6.0 - Closeout | milestone | 0d | 2010-09-09 | 2010-09-09 | 19 | 0d |  |  |
